# Tmptuan6

Schedule from MS Project, 2025-10-01 to 2025-12-08, costs in ₫, A marks actual dates.

## Calendars

- Standard: Mon-Fri 08:00-12:00, 13:00-17:00; Sat-Sun off.

## Resources

| Resource | Rate |
| --- | --- |
| Lê Duy Thanh | 500 |
| Hồ Hoàng Vĩ | 400 |
| Trần Thanh Duy | 350 |
| Quản lý dự án | 600 |
| Máy chủ | 1000 |

## Schedule

| ID | WBS | Task | Type | Duration | Start | Finish | Predecessors | Complete | Remaining | Baseline start | Baseline finish | Baseline duration | Resources | Work | Actual work | Cost | Baseline cost | Actual cost |
| --- | --- | --- | --- | --- | --- | --- | --- | --- | --- | --- | --- | --- | --- | --- | --- | --- | --- | --- |
| 1 | 1 | **Khởi động dự án** |  | 17d | 2025-10-01 A | 2025-10-23 |  | 96% | 0.6d | 2025-10-01 | 2025-10-23 | 17d |  | 168h | 163.2h | 83,200 | 83,200 | 81,280 |
| 2 | 1.1 | Xác định mục tiêu và phạm vi | manual | 2d | 2025-10-01 A | 2025-10-02 A |  | 100% |  | 2025-10-01 | 2025-10-02 | 2d | Quản lý dự án | 16h | 16h | 9,600 | 9,600 | 9,600 |
| 3 | 1.2 | Phân tích yêu cầu người dùng | manual | 4d | 2025-10-03 A | 2025-10-08 A | 2 | 100% |  | 2025-10-03 | 2025-10-08 | 4d | Hồ Hoàng Vĩ; Quản lý dự án | 64h | 64h | 32,000 | 32,000 | 32,000 |
| 4 | 1.3 | Thiết kế hệ thống | manual | 5d | 2025-10-09 A | 2025-10-15 A | 3 | 100% |  | 2025-10-09 | 2025-10-15 | 5d | Lê Duy Thanh | 40h | 40h | 20,000 | 20,000 | 20,000 |
| 5 | 1.4 | Thiết kế giao diện (UI/UX) | manual | 3d | 2025-10-16 A | 2025-10-20 | 4 | 80% | 0.6d | 2025-10-16 | 2025-10-20 | 3d | Hồ Hoàng Vĩ | 24h | 19.2h | 9,600 | 9,600 | 7,680 |
| 6 | 1.5 | Thiết kế cơ sở dữ liệu | manual | 3d | 2025-10-21 A | 2025-10-23 A | 5 | 100% |  | 2025-10-21 | 2025-10-23 | 3d | Lê Duy Thanh | 24h | 24h | 12,000 | 12,000 | 12,000 |
| 7 | 2 | **Phát triển phần mềm** |  | 27d | 2025-10-24 A | 2025-12-01 |  | 25% | 20.2d | 2025-10-24 | 2025-12-01 | 27d |  | 248h | 54.4h | 109,600 | 109,600 | 25,600 |
| 8 | 2.1 | Lập trình chức năng chính | manual | 8d | 2025-10-24 A | 2025-11-04 | 6 | 60% | 3.2d | 2025-10-24 | 2025-11-04 | 8d | Lê Duy Thanh | 64h | 38.4h | 32,000 | 32,000 | 19,200 |
| 9 | 2.2 | Lập trình giao diện người dùng | manual | 5d | 2025-11-05 A | 2025-11-11 | 8 | 40% | 3d | 2025-11-05 | 2025-11-11 | 5d | Hồ Hoàng Vĩ | 40h | 16h | 16,000 | 16,000 | 6,400 |
| 10 | 2.3 | Tích hợp module | manual | 4d | 2025-11-12 | 2025-11-17 | 9 |  |  | 2025-11-12 | 2025-11-17 | 4d | Hồ Hoàng Vĩ; Lê Duy Thanh | 64h |  | 28,800 | 28,800 |  |
| 11 | 2.4 | Kiểm thử (Testing) | manual | 6d | 2025-11-18 | 2025-11-25 | 10 |  |  | 2025-11-18 | 2025-11-25 | 6d | Trần Thanh Duy | 48h |  | 16,800 | 16,800 |  |
| 12 | 2.5 | Sửa lỗi và tối ưu hiệu năng | manual | 4d | 2025-11-26 | 2025-12-01 | 11 |  |  | 2025-11-26 | 2025-12-01 | 4d | Lê Duy Thanh | 32h |  | 16,000 | 16,000 |  |
| 13 | 3 | **Triển khai & Nghiệm thu** |  | 5d | 2025-12-02 | 2025-12-08 |  |  |  | 2025-12-02 | 2025-12-08 | 5d |  | 64h |  | 35,200 | 35,200 |  |
| 14 | 3.1 | Triển khai bản chính thức | manual | 2d | 2025-12-02 | 2025-12-03 | 12 |  |  | 2025-12-02 | 2025-12-03 | 2d | Lê Duy Thanh; Quản lý dự án | 32h |  | 17,600 | 17,600 |  |
| 15 | 3.2 | Đào tạo người dùng | manual | 2d | 2025-12-04 | 2025-12-05 | 14 |  |  | 2025-12-04 | 2025-12-05 | 2d | Quản lý dự án | 16h |  | 9,600 | 9,600 |  |
| 16 | 3.3 | Nghiệm thu dự án | manual | 1d | 2025-12-08 | 2025-12-08 | 15 |  |  | 2025-12-08 | 2025-12-08 | 1d | Hồ Hoàng Vĩ; Quản lý dự án | 16h |  | 8,000 | 8,000 |  |
